Schedule from MS Project, 2025-01-14 to 2025-07-01, costs in ₽.

## Calendars

- Стандартный: Mon-Fri 09:00-13:00, 14:00-18:00; Sat-Sun off. Exceptions (off unless hours are given): 2025-05-01 (Праздник Весны и Труда), 2025-05-02 (Выходной день), 2025-05-08 (Выходной день), 2025-05-09 (День Победы), 2025-06-12 (День России), 2025-06-13 (Выходной день).

## Resources

| Resource | Unit | Rate |
| --- | --- | --- |
| Руководитель проекта |  | 2000 |
| Системный архитектор |  | 1500 |
| Аналитик бизнес-процессов 1 |  | 800 |
| Аналитик бизнес-процессов 2 |  | 800 |
| Разработчик баз данных 1 |  | 760 |
| Разработчик баз данных 2 |  | 760 |
| Тестировщик 1 |  | 850 |
| Тестировщик 2 |  | 850 |
| Специалист по интеграции |  | 1300 |
| Специалист по технической документации |  | 1200 |
| Администратор баз данных |  | 1200 |
| Персональный компьютер | Штука | 100000 |
| Система хранения данных | Штука | 700000 |
| Бумага | Пачка | 500 |
| Маршрутизатор | Штука | 80000 |
| Коммутатор | Штука | 85000 |
| Источник бесперебойного питания | Штука | 400000 |
| Многофункциональное устройство | Штука | 100000 |
| Сетевой шкаф | Штука | 40000 |
| Лицензия Windows 11 Business |  |  |
| Лицензия Microsoft 365 Business |  |  |
| Лицензия Dr.WEB |  |  |

## Schedule

| ID | WBS | Task | Type | Duration | Start | Finish | Predecessors | Total slack | Resources | Work | Cost |
| --- | --- | --- | --- | --- | --- | --- | --- | --- | --- | --- | --- |
| 1 | 1 | **Разработка технического задания** |  | 11d | 2025-01-14 | 2025-01-28 |  | 0d |  | 208h | 855,000 |
| 2 | 1.1 | Анализ предметной области, выявление бизнес-процессов Airbus SE | manual | 5d | 2025-01-14 | 2025-01-20 |  |  | Аналитик бизнес-процессов 1; Аналитик бизнес-процессов 2; Руководитель проекта; Персональный компьютер [3 Штука]; Многофункциональное устройство [1 Штука]; Бумага [2 Пачка]; Лицензия Windows 11 Business [0.1%]; Лицензия Microsoft 365 Business [0.1%]; Лицензия Dr.WEB [0.1%] | 120h | 585,500 |
| 3 | 1.2 | Определение структуры БД, форм, отчётов и требований к интерфейсу | manual | 5d | 2025-01-21 | 2025-01-27 | 2 |  | Системный архитектор; Руководитель проекта; Персональный компьютер [1 Штука]; Лицензия Windows 11 Business [0.1%]; Лицензия Microsoft 365 Business [0.1%]; Лицензия Dr.WEB [0.1%] | 80h | 253,500 |
| 4 | 1.3 | Согласование и утверждение технического задания | manual | 1d | 2025-01-28 | 2025-01-28 | 3 |  | Руководитель проекта | 8h | 16,000 |
| 5 | 2 | **Рабочее проектирование** |  | 96d | 2025-01-29 | 2025-06-19 |  | 0d |  | 2920h | 4,488,200 |
| 6 | 2.1 | Проектирование БД, разработка таблиц, форм, запросов, отчётов | manual | 85d | 2025-01-29 | 2025-06-02 | 4 |  | Системный архитектор; Разработчик баз данных 1; Разработчик баз данных 2; Руководитель проекта; Персональный компьютер [3 Штука]; Лицензия Windows 11 Business [0.1%]; Лицензия Microsoft 365 Business [0.1%]; Лицензия Dr.WEB [0.1%] | 2720h | 3,754,100 |
| 7 | 2.2 | Подготовка инструкций для пользователя и администратора | manual | 8d | 2025-06-03 | 2025-06-16 | 6 |  | Специалист по технической документации; Персональный компьютер [1 Штука]; Лицензия Windows 11 Business [0.1%]; Лицензия Dr.WEB [0.1%]; Многофункциональное устройство [1 Штука]; Руководитель проекта; Лицензия Microsoft 365 Business [0.1%] | 128h | 418,300 |
| 8 | 2.3 | Проведение тестирования | manual | 3d | 2025-06-17 | 2025-06-19 | 7 |  | Тестировщик 1; Тестировщик 2; Руководитель проекта; Персональный компьютер [2 Штука]; Лицензия Windows 11 Business [0.1%]; Лицензия Dr.WEB [0.1%]; Лицензия Microsoft 365 Business [0.1%] | 72h | 315,800 |
| 9 | 3 | **Внедрение** |  | 8d | 2025-06-20 | 2025-07-01 |  | 0d |  | 120h | 1,610,500 |
| 10 | 3.1 | Подготовка базы данных к работе, настройка интеграции с корпоративными системами | manual | 4d | 2025-06-20 | 2025-06-25 | 8 |  | Администратор баз данных; Руководитель проекта; Специалист по интеграции; Источник бесперебойного питания [1 Штука]; Коммутатор [1 Штука]; Маршрутизатор [1 Штука]; Сетевой шкаф [1 Штука]; Система хранения данных [1 Штука]; Персональный компьютер [1 Штука]; Лицензия Windows 11 Business [0.1%]; Лицензия Microsoft 365 Business [0.1%]; Лицензия Dr.WEB [0.1%] | 96h | 1,562,500 |
| 11 | 3.2 | Сдача базы данных и документации Заказчику | manual | 3d | 2025-06-26 | 2025-07-01 | 10 |  | Руководитель проекта | 24h | 48,000 |
